# LafroX — Vista crítica de la Gantt de 155 filas

Schedule from GanttProject, 2027-02-01 to 2028-08-01.
LafroX
Vista exclusivamente de holgura cero derivada de la Gantt de 155 filas. Conserva 21 paquetes sin holgura y los hitos fijos H6 y H11. H7 y H12 no se incluyen porque tienen dos y tres días de holgura contractual, respectivamente. Se eliminan de la vista las tareas no seleccionadas. Las relaciones que pasan por ellas se proyectan como enlaces resumen inicio-inicio, con desfase calculado mediante la suma de las restricciones originales. Estos enlaces representan cadenas indirectas, no nuevas dependencias directas entre paquetes. Las notas documentan cada cadena. Las relaciones directas originales conservan su tipo y desfase cuando son el vínculo controlante. La proyección conserva exactamente las restricciones de precedencia entre elementos visibles, pero no sustituye el cronograma completo ni sus ventanas y restricciones de recursos. No recalcula CPM.

## Calendars

- Project calendar: Mon-Fri working; Sat-Sun off. Exceptions (off unless hours are given): 2027-03-26 to 2027-03-27, 2027-05-01, 2027-05-21, 2027-06-21, 2027-06-28, 2027-07-16, 2027-08-15, 2027-09-17 to 2027-09-19, 2027-10-11, 2027-10-31 to 2027-11-01, 2027-12-08, 2027-12-25, 2028-01-01, 2028-04-14 to 2028-04-15, 2028-05-01, 2028-05-21, 2028-06-20, 2028-06-26, 2028-07-16.

## Schedule

| ID | Task | Type | Duration | Start | Finish | Predecessors | Holgura (días hábiles) | Crítica |
| --- | --- | --- | --- | --- | --- | --- | --- | --- |
| 1 | RC / 5.1.4 Especificación y compra del sistema de cadena de frío |  | 42d | 2027-02-01 | 2027-03-31 |  | 0 | Sí |
| 2 | RC / 2.4.3 Validación del diseño del kit en banco de pruebas |  | 22d | 2027-04-01 | 2027-04-30 | 1 | 0 | Sí |
| 3 | RC / 2.6.3 Indicadores de usabilidad comprometidos por transacción crítica |  | 20d | 2027-05-03 | 2027-05-31 |  | 0 | Sí |
| 4 | RC / 3.1.4 Cadena de integración y entrega continua, e infraestructura como código |  | 20d | 2027-05-03 | 2027-05-31 |  | 0 | Sí |
| 5 | RC / 4 elementos: 3.2.1, 3.2.2, 3.2.4, 3.2.5 |  | 20d | 2027-05-03 | 2027-05-31 |  | 0 | Sí |
| 6 | RC / 3.2.3 Servicio de nube de ingesta de IoT, telemetría cruda y plataforma analítica |  | 20d | 2027-05-03 | 2027-05-31 |  | 0 | Sí |
| 7 | RC / 6.1.5 Acta de recepción técnica de la sala |  | 14d | 2027-05-03 | 2027-05-20 |  | 0 | Sí |
| 8 | RC / 2 elementos: 6.3.1, 6.3.2 |  | 13d | 2027-05-24 | 2027-06-09 | 7 | 0 | Sí |
| 9 | RC / 2 elementos: 6.6.1, 6.6.2 |  | 13d | 2027-06-10 | 2027-06-30 | 8 | 0 | Sí |
| 10 | RC / 3.4.9 Devoluciones en terreno y control de envases (M8 Devoluciones y envases) |  | 71d | 2027-06-18 | 2027-09-30 | 4FF, 5SS-37d | 0 | Sí |
| 11 | RC / 2 elementos: 3.7.3, 3.7.4 |  | 22d | 2027-12-01 | 2027-12-31 |  | 0 | Sí |
| 12 | RC / H6 — inicio de marcha blanca (mes 13) | milestone | 0d | 2028-02-01 | 2028-02-01 | 2SS+164d, 4SS+75d, 5SS+89d, 6SS+122d, 10SS+120d, 11SS+25d | 0 | Sí |
| 13 | RC / 4 elementos: 3.5.1, 3.5.2, 3.5.3, 3.5.4 |  | 32d | 2028-03-15 | 2028-04-28 |  | 0 | Sí |
| 14 | RC / H11 — inicio de marcha blanca (mes 19) | milestone | 0d | 2028-08-01 | 2028-08-01 | 13SS+71d | 0 | Sí |

Notes:
- 1: 5.1.4 Especificación y compra del sistema de cadena de frío / Mismas fechas, duración y dependencias que los elementos originales. Identificadores de origen: 188 / Vista derivada de 155 filas. Las flechas resumen pueden atravesar tareas ocultadas; véase el listado de relaciones de esta fila. / Salida: DIRECTA ORIGINAL: RC / 5.1.4 Especificación y compra del sistema de cadena de frío → RC / 2.4.3 Validación del diseño del kit en banco de pruebas
- 2: 2.4.3 Validación del diseño del kit en banco de pruebas / Mismas fechas, duración y dependencias que los elementos originales. Identificadores de origen: 64 / Vista derivada de 155 filas. Las flechas resumen pueden atravesar tareas ocultadas; véase el listado de relaciones de esta fila. / Entrada: DIRECTA ORIGINAL: RC / 5.1.4 Especificación y compra del sistema de cadena de frío → RC / 2.4.3 Validación del diseño del kit en banco de pruebas / Salida: RELACIÓN RESUMIDA (tareas intermedias ocultadas): RC / 2.4.3 Validación del diseño del kit en banco de pruebas → PT/H / 2.4.4 Mapeo térmico por tipo de carrocería → PT/H / 3.4.4 Cadena de frío, retención por SSCC y retiro sanitario (M9 Calidad y trazabilidad) → PT/H / 3.8.1 Pruebas de integración, regresión e idempotencia en QA (H4) → PT/H / 2 elementos: 3.8.2, 3.8.3 → PT/H / 3.8.7 Acta de certificación de la Etapa 1 (H5) → PT/H / H5 — entrega del expediente → PT/H / H5 — acta del CLIENTE (límite: mes 12) → PT/H / 4.2.1 Marcha blanca de la Etapa 1 con conciliación diaria (H6) → RC / H6 — inicio de marcha blanca (mes 13) / Equivalente inicio-inicio: 164 días hábiles. Este desfase es algebraico, no una espera añadida.
- 3: 2.6.3 Indicadores de usabilidad comprometidos por transacción crítica / Mismas fechas, duración y dependencias que los elementos originales. Identificadores de origen: 72 / Vista derivada de 155 filas. Las flechas resumen pueden atravesar tareas ocultadas; véase el listado de relaciones de esta fila. / Sin relación con las otras filas visibles en la red original de 155 filas. Se conserva aislada para no inventar dependencias.
- 4: 3.1.4 Cadena de integración y entrega continua, e infraestructura como código / Mismas fechas, duración y dependencias que los elementos originales. Identificadores de origen: 78 / Vista derivada de 155 filas. Las flechas resumen pueden atravesar tareas ocultadas; véase el listado de relaciones de esta fila. / Salida: DIRECTA ORIGINAL: RC / 3.1.4 Cadena de integración y entrega continua, e infraestructura como código → RC / 3.4.9 Devoluciones en terreno y control de envases (M8 Devoluciones y envases) / Salida: RELACIÓN RESUMIDA (tareas intermedias ocultadas): RC / 3.1.4 Cadena de integración y entrega continua, e infraestructura como código → PT/H / 3.4.1 Recepción de mercadería con captura de lote y vencimiento (M1 Recepción) → PT/H / 3.4.3 Preparación de pedidos en el turno de noche y en la cámara de congelado (M5 Preparación) → PT/H / 3.4.8 Aplicación móvil de reparto con prueba de entrega digital (M6 Reparto) → PT/H / 3.4.10 Cobro en ruta, rendición y conciliación (M7 Cobranza y rendición) → PT/H / 3.8.1 Pruebas de integración, regresión e idempotencia en QA (H4) → PT/H / 2 elementos: 3.8.2, 3.8.3 → PT/H / 3.8.7 Acta de certificación de la Etapa 1 (H5) → PT/H / H5 — entrega del expediente → PT/H / H5 — acta del CLIENTE (límite: mes 12) → PT/H / 4.2.1 Marcha blanca de la Etapa 1 con conciliación diaria (H6) → RC / H6 — inicio de marcha blanca (mes 13) / Equivalente inicio-inicio: 75 días hábiles. Este desfase es algebraico, no una espera añadida.
- 5: 3.2.1 Servicio de nube para la aplicación y los portales / 3.2.2 Servicio de nube de base de datos, caché y mensajería / 3.2.4 Servicio de nube de respaldo inmutable y réplica entre regiones / 3.2.5 Servicio de nube de seguridad y gobierno, y detección en endpoints / Mismas fechas, duración y dependencias que los elementos originales. Identificadores de origen: 81, 82, 84, 85 / Vista derivada de 155 filas. Las flechas resumen pueden atravesar tareas ocultadas; véase el listado de relaciones de esta fila. / Salida: RELACIÓN RESUMIDA (tareas intermedias ocultadas): RC / 4 elementos: 3.2.1, 3.2.2, 3.2.4, 3.2.5 → PT/H / 3 elementos: 3.1.1, 3.1.2, 3.1.3 → RC / 3.4.9 Devoluciones en terreno y control de envases (M8 Devoluciones y envases) / Equivalente inicio-inicio: -37 días hábiles. Este desfase es algebraico, no una espera añadida. / Salida: RELACIÓN RESUMIDA (tareas intermedias ocultadas): RC / 4 elementos: 3.2.1, 3.2.2, 3.2.4, 3.2.5 → PT/H / 3 elementos: 3.1.1, 3.1.2, 3.1.3 → PT/H / 3.4.1 Recepción de mercadería con captura de lote y vencimiento (M1 Recepción) → PT/H / 3.4.3 Preparación de pedidos en el turno de noche y en la cámara de congelado (M5 Preparación) → PT/H / 3.4.8 Aplicación móvil de reparto con prueba de entrega digital (M6 Reparto) → PT/H / 3.4.10 Cobro en ruta, rendición y conciliación (M7 Cobranza y rendición) → PT/H / 3.8.1 Pruebas de integración, regresión e idempotencia en QA (H4) → PT/H / 2 elementos: 3.8.2, 3.8.3 → PT/H / 3.8.7 Acta de certificación de la Etapa 1 (H5) → PT/H / H5 — entrega del expediente → PT/H / H5 — acta del CLIENTE (límite: mes 12) → PT/H / 4.2.1 Marcha blanca de la Etapa 1 con conciliación diaria (H6) → RC / H6 — inicio de marcha blanca (mes 13) / Equivalente inicio-inicio: 89 días hábiles. Este desfase es algebraico, no una espera añadida.
- 6: 3.2.3 Servicio de nube de ingesta de IoT, telemetría cruda y plataforma analítica / Mismas fechas, duración y dependencias que los elementos originales. Identificadores de origen: 83 / Vista derivada de 155 filas. Las flechas resumen pueden atravesar tareas ocultadas; véase el listado de relaciones de esta fila. / Salida: RELACIÓN RESUMIDA (tareas intermedias ocultadas): RC / 3.2.3 Servicio de nube de ingesta de IoT, telemetría cruda y plataforma analítica → PT/H / 3.4.5 Ingesta de temperatura (M9) y posición de flota (M12) → PT/H / 3.8.1 Pruebas de integración, regresión e idempotencia en QA (H4) → PT/H / 2 elementos: 3.8.2, 3.8.3 → PT/H / 3.8.7 Acta de certificación de la Etapa 1 (H5) → PT/H / H5 — entrega del expediente → PT/H / H5 — acta del CLIENTE (límite: mes 12) → PT/H / 4.2.1 Marcha blanca de la Etapa 1 con conciliación diaria (H6) → RC / H6 — inicio de marcha blanca (mes 13) / Equivalente inicio-inicio: 122 días hábiles. Este desfase es algebraico, no una espera añadida.
- 7: 6.1.5 Acta de recepción técnica de la sala / Mismas fechas, duración y dependencias que los elementos originales. Identificadores de origen: 209 / Vista derivada de 155 filas. Las flechas resumen pueden atravesar tareas ocultadas; véase el listado de relaciones de esta fila. / Salida: DIRECTA ORIGINAL: RC / 6.1.5 Acta de recepción técnica de la sala → RC / 2 elementos: 6.3.1, 6.3.2
- 8: 6.3.1 Rack R01 de servidores montado: clúster de tres nodos, respaldo local, consola KVM y traslado del servidor del ERP del CLIENTE / 6.3.2 Rack R02 de comunicaciones montado: firewalls, switches de núcleo y de gestión, y distribución de fibra / Mismas fechas, duración y dependencias que los elementos originales. Identificadores de origen: 215, 216 / Vista derivada de 155 filas. Las flechas resumen pueden atravesar tareas ocultadas; véase el listado de relaciones de esta fila. / Entrada: DIRECTA ORIGINAL: RC / 6.1.5 Acta de recepción técnica de la sala → RC / 2 elementos: 6.3.1, 6.3.2 / Salida: DIRECTA ORIGINAL: RC / 2 elementos: 6.3.1, 6.3.2 → RC / 2 elementos: 6.6.1, 6.6.2
- 9: 6.6.1 Software de base instalado en los sitios: virtualización, contenedores, PostgreSQL, RabbitMQ y Keycloak / 6.6.2 Enlaces de fibra, LTE y Starlink habilitados, con conmutación al respaldo / Mismas fechas, duración y dependencias que los elementos originales. Identificadores de origen: 231, 232 / Vista derivada de 155 filas. Las flechas resumen pueden atravesar tareas ocultadas; véase el listado de relaciones de esta fila. / Entrada: DIRECTA ORIGINAL: RC / 2 elementos: 6.3.1, 6.3.2 → RC / 2 elementos: 6.6.1, 6.6.2
- 10: 3.4.9 Devoluciones en terreno y control de envases (M8 Devoluciones y envases) / Mismas fechas, duración y dependencias que los elementos originales. Identificadores de origen: 103 / Vista derivada de 155 filas. Las flechas resumen pueden atravesar tareas ocultadas; véase el listado de relaciones de esta fila. / Entrada: DIRECTA ORIGINAL: RC / 3.1.4 Cadena de integración y entrega continua, e infraestructura como código → RC / 3.4.9 Devoluciones en terreno y control de envases (M8 Devoluciones y envases) / Entrada: RELACIÓN RESUMIDA (tareas intermedias ocultadas): RC / 4 elementos: 3.2.1, 3.2.2, 3.2.4, 3.2.5 → PT/H / 3 elementos: 3.1.1, 3.1.2, 3.1.3 → RC / 3.4.9 Devoluciones en terreno y control de envases (M8 Devoluciones y envases) / Equivalente inicio-inicio: -37 días hábiles. Este desfase es algebraico, no una espera añadida. / Salida: RELACIÓN RESUMIDA (tareas intermedias ocultadas): RC / 3.4.9 Devoluciones en terreno y control de envases (M8 Devoluciones y envases) → PT/H / 3.8.1 Pruebas de integración, regresión e idempotencia en QA (H4) → PT/H / 2 elementos: 3.8.2, 3.8.3 → PT/H / 3.8.7 Acta de certificación de la Etapa 1 (H5) → PT/H / H5 — entrega del expediente → PT/H / H5 — acta del CLIENTE (límite: mes 12) → PT/H / 4.2.1 Marcha blanca de la Etapa 1 con conciliación diaria (H6) → RC / H6 — inicio de marcha blanca (mes 13) / Equivalente inicio-inicio: 120 días hábiles. Este desfase es algebraico, no una espera añadida.
- 11: 3.7.3 Saldos migrados desde el WMS de Talca / 3.7.4 Saldos cargados en Concepción desde el conteo físico / Mismas fechas, duración y dependencias que los elementos originales. Identificadores de origen: 121, 122 / Vista derivada de 155 filas. Las flechas resumen pueden atravesar tareas ocultadas; véase el listado de relaciones de esta fila. / Salida: RELACIÓN RESUMIDA (tareas intermedias ocultadas): RC / 2 elementos: 3.7.3, 3.7.4 → PT/H / 3.7.5 Acta de conciliación y corte fuera de las ventanas de congelamiento → PT/H / 4.2.1 Marcha blanca de la Etapa 1 con conciliación diaria (H6) → RC / H6 — inicio de marcha blanca (mes 13) / Equivalente inicio-inicio: 25 días hábiles. Este desfase es algebraico, no una espera añadida.
- 12: H6 — inicio de marcha blanca (mes 13) / Mismas fechas, duración y dependencias que los elementos originales. Identificadores de origen: 301 / Vista derivada de 155 filas. Las flechas resumen pueden atravesar tareas ocultadas; véase el listado de relaciones de esta fila. / Entrada: RELACIÓN RESUMIDA (tareas intermedias ocultadas): RC / 2.4.3 Validación del diseño del kit en banco de pruebas → PT/H / 2.4.4 Mapeo térmico por tipo de carrocería → PT/H / 3.4.4 Cadena de frío, retención por SSCC y retiro sanitario (M9 Calidad y trazabilidad) → PT/H / 3.8.1 Pruebas de integración, regresión e idempotencia en QA (H4) → PT/H / 2 elementos: 3.8.2, 3.8.3 → PT/H / 3.8.7 Acta de certificación de la Etapa 1 (H5) → PT/H / H5 — entrega del expediente → PT/H / H5 — acta del CLIENTE (límite: mes 12) → PT/H / 4.2.1 Marcha blanca de la Etapa 1 con conciliación diaria (H6) → RC / H6 — inicio de marcha blanca (mes 13) / Equivalente inicio-inicio: 164 días hábiles. Este desfase es algebraico, no una espera añadida. / Entrada: RELACIÓN RESUMIDA (tareas intermedias ocultadas): RC / 3.1.4 Cadena de integración y entrega continua, e infraestructura como código → PT/H / 3.4.1 Recepción de mercadería con captura de lote y vencimiento (M1 Recepción) → PT/H / 3.4.3 Preparación de pedidos en el turno de noche y en la cámara de congelado (M5 Preparación) → PT/H / 3.4.8 Aplicación móvil de reparto con prueba de entrega digital (M6 Reparto) → PT/H / 3.4.10 Cobro en ruta, rendición y conciliación (M7 Cobranza y rendición) → PT/H / 3.8.1 Pruebas de integración, regresión e idempotencia en QA (H4) → PT/H / 2 elementos: 3.8.2, 3.8.3 → PT/H / 3.8.7 Acta de certificación de la Etapa 1 (H5) → PT/H / H5 — entrega del expediente → PT/H / H5 — acta del CLIENTE (límite: mes 12) → PT/H / 4.2.1 Marcha blanca de la Etapa 1 con conciliación diaria (H6) → RC / H6 — inicio de marcha blanca (mes 13) / Equivalente inicio-inicio: 75 días hábiles. Este desfase es algebraico, no una espera añadida. / Entrada: RELACIÓN RESUMIDA (tareas intermedias ocultadas): RC / 4 elementos: 3.2.1, 3.2.2, 3.2.4, 3.2.5 → PT/H / 3 elementos: 3.1.1, 3.1.2, 3.1.3 → PT/H / 3.4.1 Recepción de mercadería con captura de lote y vencimiento (M1 Recepción) → PT/H / 3.4.3 Preparación de pedidos en el turno de noche y en la cámara de congelado (M5 Preparación) → PT/H / 3.4.8 Aplicación móvil de reparto con prueba de entrega digital (M6 Reparto) → PT/H / 3.4.10 Cobro en ruta, rendición y conciliación (M7 Cobranza y rendición) → PT/H / 3.8.1 Pruebas de integración, regresión e idempotencia en QA (H4) → PT/H / 2 elementos: 3.8.2, 3.8.3 → PT/H / 3.8.7 Acta de certificación de la Etapa 1 (H5) → PT/H / H5 — entrega del expediente → PT/H / H5 — acta del CLIENTE (límite: mes 12) → PT/H / 4.2.1 Marcha blanca de la Etapa 1 con conciliación diaria (H6) → RC / H6 — inicio de marcha blanca (mes 13) / Equivalente inicio-inicio: 89 días hábiles. Este desfase es algebraico, no una espera añadida. / Entrada: RELACIÓN RESUMIDA (tareas intermedias ocultadas): RC / 3.2.3 Servicio de nube de ingesta de IoT, telemetría cruda y plataforma analítica → PT/H / 3.4.5 Ingesta de temperatura (M9) y posición de flota (M12) → PT/H / 3.8.1 Pruebas de integración, regresión e idempotencia en QA (H4) → PT/H / 2 elementos: 3.8.2, 3.8.3 → PT/H / 3.8.7 Acta de certificación de la Etapa 1 (H5) → PT/H / H5 — entrega del expediente → PT/H / H5 — acta del CLIENTE (límite: mes 12) → PT/H / 4.2.1 Marcha blanca de la Etapa 1 con conciliación diaria (H6) → RC / H6 — inicio de marcha blanca (mes 13) / Equivalente inicio-inicio: 122 días hábiles. Este desfase es algebraico, no una espera añadida. / Entrada: RELACIÓN RESUMIDA (tareas intermedias ocultadas): RC / 3.4.9 Devoluciones en terreno y control de envases (M8 Devoluciones y envases) → PT/H / 3.8.1 Pruebas de integración, regresión e idempotencia en QA (H4) → PT/H / 2 elementos: 3.8.2, 3.8.3 → PT/H / 3.8.7 Acta de certificación de la Etapa 1 (H5) → PT/H / H5 — entrega del expediente → PT/H / H5 — acta del CLIENTE (límite: mes 12) → PT/H / 4.2.1 Marcha blanca de la Etapa 1 con conciliación diaria (H6) → RC / H6 — inicio de marcha blanca (mes 13) / Equivalente inicio-inicio: 120 días hábiles. Este desfase es algebraico, no una espera añadida. / Entrada: RELACIÓN RESUMIDA (tareas intermedias ocultadas): RC / 2 elementos: 3.7.3, 3.7.4 → PT/H / 3.7.5 Acta de conciliación y corte fuera de las ventanas de congelamiento → PT/H / 4.2.1 Marcha blanca de la Etapa 1 con conciliación diaria (H6) → RC / H6 — inicio de marcha blanca (mes 13) / Equivalente inicio-inicio: 25 días hábiles. Este desfase es algebraico, no una espera añadida.
- 13: 3.5.1 Pedido electrónico y aviso de despacho para las cadenas, y portal de proveedores (M11 Canal moderno) / 3.5.2 Portal web de clientes: cuenta, saldo, entregas y documentos / 3.5.3 Portal web de transportistas: rutas asignadas del día siguiente / 3.5.4 Costo de servir por cliente y por entrega (M10 Analítica) / Mismas fechas, duración y dependencias que los elementos originales. Identificadores de origen: 107, 108, 109, 110 / Vista derivada de 155 filas. Las flechas resumen pueden atravesar tareas ocultadas; véase el listado de relaciones de esta fila. / Salida: RELACIÓN RESUMIDA (tareas intermedias ocultadas): RC / 4 elementos: 3.5.1, 3.5.2, 3.5.3, 3.5.4 → PT/H / 3.9.1 Pruebas de integración y regresión sin afectar la Etapa 1 en producción (H9) → PT/H / 3 elementos: 3.9.3, 3.9.4, 3.9.7 → PT/H / 3.9.6 Acta de certificación de la Etapa 2 y cierre del desarrollo (H10) → PT/H / H10 — entrega del expediente → PT/H / H10 — acta del CLIENTE (límite: mes 18) → PT/H / 4.3.1 Marcha blanca de la Etapa 2 en convivencia con la Etapa 1 y fuente única de datos (H11) → RC / H11 — inicio de marcha blanca (mes 19) / Equivalente inicio-inicio: 71 días hábiles. Este desfase es algebraico, no una espera añadida.
- 14: H11 — inicio de marcha blanca (mes 19) / Mismas fechas, duración y dependencias que los elementos originales. Identificadores de origen: 310 / Vista derivada de 155 filas. Las flechas resumen pueden atravesar tareas ocultadas; véase el listado de relaciones de esta fila. / Entrada: RELACIÓN RESUMIDA (tareas intermedias ocultadas): RC / 4 elementos: 3.5.1, 3.5.2, 3.5.3, 3.5.4 → PT/H / 3.9.1 Pruebas de integración y regresión sin afectar la Etapa 1 en producción (H9) → PT/H / 3 elementos: 3.9.3, 3.9.4, 3.9.7 → PT/H / 3.9.6 Acta de certificación de la Etapa 2 y cierre del desarrollo (H10) → PT/H / H10 — entrega del expediente → PT/H / H10 — acta del CLIENTE (límite: mes 18) → PT/H / 4.3.1 Marcha blanca de la Etapa 2 en convivencia con la Etapa 1 y fuente única de datos (H11) → RC / H11 — inicio de marcha blanca (mes 19) / Equivalente inicio-inicio: 71 días hábiles. Este desfase es algebraico, no una espera añadida.
